# pikcv

How a schedule from MS Project changed from version to version. A marks actual dates.

## Version 1 (saved 2007-11-24, file Proje Plani.mpp)

Note of the change: project source

| ID | WBS | Task | Duration | Start | Finish | Predecessors | Complete | Total float |
| --- | --- | --- | --- | --- | --- | --- | --- | --- |
| 1 | 1 | **PIK** | 54d | 2007-10-29 09:00 A | 2008-01-11 09:00 |  | 9% | 0d |
| 2 |  | Veritabanı tasarımı | 5d | 2007-10-29 09:00 A | 2007-11-03 09:00 A |  | 100% |  |
| 3 | 1.2 | **PIKCV site** | 36.62d | 2007-11-03 09:00 A | 2007-12-25 14:00 | 2 | 10% | 0d |
| 4 |  | Anasayfa | 1d | 2007-11-03 09:00 | 2007-11-05 14:00 |  |  | 2.48d |
| 5 |  | Statik sayfalar | 1d | 2007-11-05 14:00 | 2007-11-06 14:00 | 4 |  | 2.86d |
| 6 | 1.2.3 | **İş arayan** | 17.5d | 2007-11-06 14:00 A | 2007-11-30 09:00 | 5 | 22% | 0d |
| 7 |  | Anasayfa | 2d | 2007-11-06 14:00 A | 2007-11-08 14:00 A |  | 100% |  |
| 8 | 1.2.3.2 | **Yeni üyelik** | 6d | 2007-11-08 14:00 A | 2007-11-16 14:00 | 7 | 32% | 0d |
| 9 |  | Kişisel bilgi girişi | 0.5d | 2007-11-08 14:00 A | 2007-11-09 09:00 A |  | 100% |  |
| 10 |  | CV girişi | 3d | 2007-11-09 09:00 A | 2007-11-13 14:00 | 9 | 20% | 3d |
| 11 |  | Pozisyon girişi | 1d | 2007-11-13 14:00 A | 2007-11-14 14:00 A | 10 | 100% |  |
| 12 |  | Testler | 2d | 2007-11-14 14:00 | 2007-11-16 14:00 | 11 |  | 0d |
| 13 |  | Kişisel anasayfa | 2d | 2007-11-16 14:00 | 2007-11-20 09:00 | 8 |  | 0d |
| 14 |  | Üye girişi | 0.5d | 2007-11-20 09:00 | 2007-11-20 14:00 | 13 |  | 0d |
| 15 |  | İş arama | 2d | 2007-11-20 14:00 | 2007-11-22 14:00 | 14 |  | 0d |
| 16 | 1.2.3.6 | **İlanlar** | 2.5d | 2007-11-22 14:00 | 2007-11-27 09:00 | 15 |  | 0d |
| 17 |  | İlan listesi | 2d | 2007-11-22 14:00 | 2007-11-26 09:00 |  |  | 0d |
| 18 |  | İlan başvuru | 1d | 2007-11-26 09:00 | 2007-11-27 09:00 | 17 |  | 0d |
| 19 |  | Başvurularım | 1d | 2007-11-27 09:00 | 2007-11-28 09:00 | 16 |  | 0d |
| 20 |  | Makaleler | 1d | 2007-11-28 09:00 | 2007-11-29 09:00 | 19 |  | 0d |
| 21 |  | Firma görüşleri | 0.5d | 2007-11-29 09:00 | 2007-11-29 14:00 | 20 |  | 0d |
| 22 |  | Başarı hikayeleri | 0.5d | 2007-11-29 14:00 | 2007-11-30 09:00 | 21 |  | 0d |
| 23 | 1.2.4 | **İşveren** | 17d | 2007-11-30 09:00 | 2007-12-25 09:00 | 6 |  | 0d |
| 24 |  | Anasayfa | 1d | 2007-11-30 09:00 | 2007-12-01 09:00 |  |  | 0d |
| 25 |  | Yeni üyelik | 1d | 2007-12-01 09:00 | 2007-12-03 14:00 | 24 |  | 0d |
| 26 |  | Üye girişi | 0.5d | 2007-12-03 14:00 | 2007-12-04 09:00 | 25 |  | 0d |
| 27 |  | Firma anasayfası | 2d | 2007-12-04 09:00 | 2007-12-06 09:00 | 26 |  | 0d |
| 28 | 1.2.4.5 | **İlanlarım** | 5.5d | 2007-12-06 09:00 | 2007-12-13 14:00 | 27 |  | 0d |
| 29 |  | İlan listesi | 2d | 2007-12-06 09:00 | 2007-12-08 09:00 |  |  | 0d |
| 30 |  | Başvurular | 1d | 2007-12-08 09:00 | 2007-12-10 14:00 | 29 |  | 0d |
| 31 |  | Başvuru cevaplama | 0.5d | 2007-12-10 14:00 | 2007-12-11 09:00 | 30 |  | 0d |
| 32 |  | Mülakat atama | 2d | 2007-12-11 09:00 | 2007-12-13 09:00 | 31 |  | 0d |
| 33 |  | Başvuru istatistikleri | 0.5d | 2007-12-13 09:00 | 2007-12-13 14:00 | 32 |  | 0d |
| 34 |  | Yeni ilan | 2.5d | 2007-12-13 14:00 | 2007-12-17 14:00 | 28 |  | 0d |
| 35 |  | CV tarama | 3d | 2007-12-17 14:00 | 2007-12-20 14:00 | 34 |  | 0d |
| 36 |  | Özel proje | 1d | 2007-12-20 14:00 | 2007-12-21 14:00 | 35 |  | 0d |
| 37 |  | Klasör yönetimi | 2d | 2007-12-21 14:00 | 2007-12-25 09:00 | 36 |  | 0d |
| 38 |  | Site haritası | 0.5d | 2007-12-25 09:00 | 2007-12-25 14:00 | 23 |  | 0d |
| 39 | 1.3 | **Yönetim paneli** | 30.62d | 2007-11-03 09:00 | 2007-12-17 14:00 | 2 |  | 5.12d |
| 40 |  | Kullanıcı girişi | 0.5d | 2007-11-03 09:00 | 2007-11-05 09:00 |  |  | 5.12d |
| 41 |  | Kullanıcı tanımlama/yetkilendirme | 1.5d | 2007-11-05 09:00 | 2007-11-06 14:00 | 40 |  | 5.5d |
| 42 | 1.3.3 | **Aday işlemleri** | 7d | 2007-11-06 14:00 | 2007-11-15 14:00 | 41 |  | 5.5d |
| 43 |  | Aday listesi | 1d | 2007-11-06 14:00 | 2007-11-07 14:00 |  |  | 5.5d |
| 44 |  | Kişi kartı | 2d | 2007-11-07 14:00 | 2007-11-09 14:00 | 43 |  | 5.38d |
| 45 |  | Özgeçmiş düzenleme/onaylama | 1d | 2007-11-09 14:00 | 2007-11-12 09:00 | 44 |  | 5.38d |
| 46 |  | Klasöre gönder | 0.5d | 2007-11-12 09:00 | 2007-11-12 14:00 | 45 |  | 5.5d |
| 47 |  | Özel projeye gönder | 0.5d | 2007-11-12 14:00 | 2007-11-13 09:00 | 46 |  | 5.5d |
| 48 |  | Eleman/yönetici havuzuna at | 0.5d | 2007-11-13 09:00 | 2007-11-13 14:00 | 47 |  | 5.5d |
| 49 |  | Mesaj gönder | 0.5d | 2007-11-13 14:00 | 2007-11-14 09:00 | 48 |  | 5.5d |
| 50 |  | Mülakata çağır | 1d | 2007-11-14 09:00 | 2007-11-15 09:00 | 49 |  | 5.5d |
| 51 |  | Aktif/pasif yap | 0.5d | 2007-11-15 09:00 | 2007-11-15 14:00 | 50 |  | 5.5d |
| 52 | 1.3.4 | **Firma yönetimi** | 3.5d | 2007-11-15 14:00 | 2007-11-21 09:00 | 42 |  | 5.5d |
| 53 |  | Firma listesi | 1d | 2007-11-15 14:00 | 2007-11-16 14:00 |  |  | 5.38d |
| 54 |  | Firma işlemleri | 2d | 2007-11-16 14:00 | 2007-11-20 09:00 | 53 |  | 5.38d |
| 55 |  | Firma girişi | 1d | 2007-11-20 09:00 | 2007-11-21 09:00 | 54 |  | 5.5d |
| 56 | 1.3.5 | **İçerik yönetimi** | 1.5d | 2007-11-21 09:00 | 2007-11-22 14:00 | 52 |  | 5.5d |
| 57 |  | Makale yönetimi | 0.5d | 2007-11-21 09:00 | 2007-11-21 14:00 |  |  | 5.5d |
| 58 |  | Firma görüşleri yönetimi | 0.5d | 2007-11-21 14:00 | 2007-11-22 09:00 | 57 |  | 5.5d |
| 59 |  | Başarı hikayeleri yönetimi | 0.5d | 2007-11-22 09:00 | 2007-11-22 14:00 | 58 |  | 5.5d |
| 60 | 1.3.6 | **İlan kontrolü** | 2.5d | 2007-11-22 14:00 | 2007-11-27 09:00 | 56 |  | 5.5d |
| 61 |  | İlan listesi | 2d | 2007-11-22 14:00 | 2007-11-26 09:00 |  |  | 5.5d |
| 62 |  | Başvuru listesi | 1d | 2007-11-26 09:00 | 2007-11-27 09:00 | 61 |  | 5.5d |
| 63 | 1.3.7 | **Tanımlama ekranları** | 6.5d | 2007-11-27 09:00 | 2007-12-05 14:00 | 60 |  | 5.5d |
| 64 |  | Sektörler | 1d | 2007-11-27 09:00 | 2007-11-28 09:00 |  |  | 5.5d |
| 65 |  | Pozisyonlar | 1d | 2007-11-28 09:00 | 2007-11-29 09:00 | 64 |  | 5.5d |
| 66 |  | İlan kaldırma sebepleri | 0.25d | 2007-11-29 09:00 | 2007-11-29 11:00 | 65 |  | 5.5d |
| 67 |  | Diller | 0.25d | 2007-11-29 11:00 | 2007-11-29 14:00 | 66 |  | 5.5d |
| 68 |  | Ülkeler | 0.25d | 2007-11-29 14:00 | 2007-11-29 16:00 | 67 |  | 5.5d |
| 69 |  | Şehirler | 0.25d | 2007-11-29 16:00 | 2007-11-30 09:00 | 68 |  | 5.5d |
| 70 |  | İlçeler | 0.25d | 2007-11-30 09:00 | 2007-11-30 11:00 | 69 |  | 5.5d |

| ID | WBS | Task | Duration | Start | Finish | Predecessors | Total float |
| --- | --- | --- | --- | --- | --- | --- | --- |
| 71 |  | İş alanları | 0.25d | 2007-11-30 11:00 | 2007-11-30 14:00 | 70 | 5.38d |
| 72 |  | Aday ünvanları | 0.25d | 2007-11-30 14:00 | 2007-11-30 16:00 | 71 | 5.12d |
| 73 |  | Eğitim durumu | 0.25d | 2007-11-30 16:00 | 2007-12-01 09:00 | 72 | 5.12d |
| 74 |  | Nitelik tipleri | 0.25d | 2007-12-01 09:00 | 2007-12-01 11:00 | 73 | 5.12d |
| 75 |  | Üniversiteler | 0.25d | 2007-12-01 11:00 | 2007-12-03 09:00 | 74 | 5.38d |
| 76 |  | Üniversite fakülteleri | 0.25d | 2007-12-03 09:00 | 2007-12-03 11:00 | 75 | 5.5d |
| 77 |  | Üniversite bölümleri | 0.25d | 2007-12-03 11:00 | 2007-12-03 14:00 | 76 | 5.5d |
| 78 |  | Firma departmanları | 0.25d | 2007-12-03 14:00 | 2007-12-03 16:00 | 77 | 5.5d |
| 79 |  | Kimlik belgesi tipleri | 0.25d | 2007-12-03 16:00 | 2007-12-04 09:00 | 78 | 5.5d |
| 80 |  | Sürücü ehliyeti tipleri | 0.25d | 2007-12-04 09:00 | 2007-12-04 11:00 | 79 | 5.5d |
| 81 |  | Engellilik tipleri | 0.25d | 2007-12-04 11:00 | 2007-12-04 14:00 | 80 | 5.5d |
| 82 |  | Hobiler | 0.25d | 2007-12-04 14:00 | 2007-12-04 16:00 | 81 | 5.5d |
| 83 |  | Bilgisayar bilgi tipleri | 0.25d | 2007-12-04 16:00 | 2007-12-05 09:00 | 82 | 5.5d |
| 84 |  | Sertifikalar | 0.25d | 2007-12-05 09:00 | 2007-12-05 11:00 | 83 | 5.5d |
| 85 |  | Özel eğitim tipleri | 0.25d | 2007-12-05 11:00 | 2007-12-05 14:00 | 84 | 5.5d |
| 86 | 1.3.8 | **Ödeme işlemleri** | 4.5d | 2007-12-05 14:00 | 2007-12-12 09:00 | 63 | 5.5d |
| 87 |  | Ödeme takibi (listesi) | 2d | 2007-12-05 14:00 | 2007-12-07 14:00 |  | 5.38d |
| 88 |  | Ödeme girişi | 1d | 2007-12-07 14:00 | 2007-12-10 09:00 | 87 | 5.38d |
| 89 |  | Faturalama | 2d | 2007-12-10 09:00 | 2007-12-12 09:00 | 88 | 5.5d |
| 90 |  | Banner yönetimi | 4d | 2007-12-12 09:00 | 2007-12-17 14:00 | 86 | 5.5d |
| 91 |  | Raporlar | 8d | 2007-12-25 14:00 | 2008-01-04 09:00 | 3 | 0d |
| 92 |  | Raporlar | 14d | 2007-12-17 14:00 | 2008-01-03 14:00 | 39 | 5.5d |
| 93 |  | Test | 5d | 2008-01-04 09:00 | 2008-01-11 09:00 | 91 | 0d |

## Version 2 (saved 2007-12-24, file Proje Plani 2007_29_11 (2003) V2.mpp)

Note of the change: project source

Last finish 2008-01-11 → 2008-01-23 (+12d). Complete tasks 4 → 12.

Added:

| ID | Task | Duration | Start | Finish | Predecessors | Constraint | Resources |
| --- | --- | --- | --- | --- | --- | --- | --- |
| 14 | Kişisel Bilgiler | 3d | 2007-12-13 09:00 A | 2007-12-17 14:00 A | 13 |  | Burak Uçakan |
| 16 | Mesajlaşma | 2d | 2007-12-19 14:00 A | 2007-12-21 14:00 A | 15 |  | Burak Uçakan |
| 18 | İlan Arama | 3d | 2007-12-21 14:00 A | 2007-12-26 09:00 A | 16 |  | Burak Uçakan |
| 20 | Başvuru | 0.5d | 2007-12-27 09:00 A | 2007-12-27 14:00 A | 19 |  | Burak Uçakan |
| 21 | Ambargolu Firmalar | 0.5d | 2007-12-27 14:00 A | 2007-12-28 09:00 A | 20 |  | Burak Uçakan |
| 22 | Notifikasyonlar | 0.75d | 2007-12-28 09:00 A | 2007-12-28 16:00 A | 21 |  | Burak Uçakan |
| 27 | **Eleman Arama** | 3d | 2007-12-11 14:00 | 2007-12-14 14:00 |  |  |  |
| 28 | Eleman Arama | 2d | 2007-12-11 14:00 | 2007-12-13 14:00 | 26 |  | Oray Kan |
| 29 | Listeleme | 1d | 2007-12-13 14:00 | 2007-12-14 14:00 | 28 |  | Oray Kan |
| 31 | Ödeme İşlem Listesi | 0.5d | 2007-12-17 14:00 | 2007-12-18 09:00 | 30 |  | Oray Kan |
| 34 | İlan Detay | 0.5d | 2007-12-18 09:00 | 2007-12-18 14:00 | 33 |  | Oray Kan |
| 35 | Başvurularım | 0.5d | 2007-12-18 14:00 | 2007-12-19 09:00 | 34 |  | Oray Kan |
| 36 | **Başvuru İşlemleri** | 2.2d | 2007-12-19 09:00 | 2007-12-21 10:36 |  |  |  |
| 39 | Klasöre Gönder | 0.5d | 2007-12-20 09:00 | 2007-12-20 14:00 | 38 |  | Oray Kan |
| 40 | Satın Al | 0.2d | 2007-12-20 14:00 | 2007-12-20 15:36 | 39 |  | Oray Kan |
| 42 | Klasör Yönlendirme | 1d | 2007-12-21 10:36 | 2007-12-22 10:36 | 41 |  | Oray Kan |
| 44 | Yönetim Harici Kısmın Tamamlanması | 0d | 2007-12-28 16:00 | 2007-12-28 16:00 | 22, 43 | start no earlier than 2007-12-24 09:00 |  |
| 99 | Kurulum | 1d | 2008-01-22 16:00 | 2008-01-23 16:00 | 98 |  |  |
| 100 | Proje Teslim | 0d | 2008-01-23 16:00 | 2008-01-23 16:00 | 99 |  |  |

Removed: 11 Pozisyon girişi; 15 İş arama; 18 İlan başvuru; 20 Makaleler; 21 Firma görüşleri; 22 Başarı hikayeleri; 26 Üye girişi; 30 Başvurular; 35 CV tarama; 37 Klasör yönetimi; 38 Site haritası; 92 Raporlar

Changed:

| ID | Task | Start | Finish | Duration | Complete | Total float | Predecessors | Other |
| --- | --- | --- | --- | --- | --- | --- | --- | --- |
| 1 | **PIK** | 2007-10-29 09:00 A → 2007-11-15 09:00 A (+17d) | 2008-01-11 09:00 → 2008-01-23 16:00 (+12d) | 54d → 54.75d | 9% → 36% |  |  | baseline start 2007-10-29 09:00 → none; baseline finish 2008-01-11 09:00 → none |
| 2 | Veritabanı tasarımı | 2007-10-29 09:00 A → 2007-11-15 09:00 A (+17d) | 2007-11-03 09:00 A → 2007-11-21 14:00 A (+18d) |  |  |  |  | resources YU 2 → Burak Uçakan; baseline start 2007-10-29 09:00 → none; baseline finish 2007-11-03 09:00 → none |
| 3 | **PIKCV site** | 2007-11-03 09:00 A → 2007-11-21 14:00 A (+18d) | 2007-12-25 14:00 → 2007-12-28 16:00 (+3d) | 36.62d → 29.75d | 10% → 55% | 0d → 20d |  | baseline start 2007-11-03 09:00 → none; baseline finish 2007-12-25 14:00 → none |
| 4 | Anasayfa | 2007-11-03 09:00 → 2007-11-21 14:00 (+18d) | 2007-11-05 14:00 → 2007-11-22 14:00 (+17d) |  |  | 2.48d → 45.25d |  | resources YU 1 → Burak Uçakan; baseline start 2007-11-03 09:00 → none; baseline finish 2007-11-05 14:00 → none |
| 5 | Statik sayfalar | 2007-11-05 14:00 → 2007-11-22 14:00 (+17d) | 2007-11-06 14:00 → 2007-11-23 14:00 (+17d) |  |  | 2.86d → 45.25d |  | resources YU 1 → Burak Uçakan; baseline start 2007-11-05 14:00 → none; baseline finish 2007-11-06 14:00 → none |
| 6 | **İş arayan** | 2007-11-06 14:00 A → 2007-11-23 14:00 A (+17d) | 2007-11-30 09:00 → 2007-12-28 16:00 (+28d) | 17.5d → 27.75d | 22% → 90% | 0d → 20d |  | baseline start 2007-11-06 14:00 → none; baseline finish 2007-11-30 09:00 → none |
| 7 | Anasayfa | 2007-11-06 14:00 A → 2007-11-23 14:00 A (+17d) | 2007-11-08 14:00 A → 2007-11-27 09:00 A (+19d) |  |  |  |  | resources YU 1 → Burak Uçakan; baseline start 2007-11-06 14:00 → none; baseline finish 2007-11-08 14:00 → none |
| 8 | Üye girişi | 2007-11-20 09:00 → 2007-11-27 09:00 A (+7d) | 2007-11-20 14:00 → 2007-11-27 14:00 A (+7d) |  | 0% → 100% | 0d → none | 13 → 7 | resources YU 1 → Burak Uçakan; baseline start 2007-11-20 09:00 → none; baseline finish 2007-11-20 14:00 → none |
| 9 | **Yeni üyelik** | 2007-11-08 14:00 A → 2007-11-27 14:00 A (+19d) | 2007-11-16 14:00 → 2007-12-11 09:00 (+25d) | 6d → 10.5d | 32% → 81% | 0d → 34.25d | 7 → 8 | baseline start 2007-11-08 14:00 → none; baseline finish 2007-11-16 14:00 → none |
| 10 | Kişisel bilgi girişi | 2007-11-08 14:00 A → 2007-11-27 14:00 A (+19d) | 2007-11-09 09:00 A → 2007-11-28 09:00 A (+19d) |  |  |  |  | resources YU 1 → Burak Uçakan; baseline start 2007-11-08 14:00 → none; baseline finish 2007-11-09 09:00 → none |
| 11 | CV girişi | 2007-11-09 09:00 A → 2007-11-28 09:00 A (+19d) | 2007-11-13 14:00 → 2007-12-04 14:00 A (+21d) | 3d → 5d | 20% → 100% | 3d → none |  | resources YU 1 → Burak Uçakan; baseline start 2007-11-09 09:00 → none; baseline finish 2007-11-13 14:00 → none |
| 12 | Test atama | 2007-11-14 14:00 → 2007-12-04 14:00 A (+20d) | 2007-11-16 14:00 → 2007-12-11 09:00 (+25d) | 2d → 5d | 0% → 60% | 0d → 34.25d | Pozisyon girişi → 11 | was named Testler; resources YU 1 → Burak Uçakan; baseline start 2007-11-14 14:00 → none; baseline finish 2007-11-16 14:00 → none |
| 13 | Kişisel anasayfa | 2007-11-16 14:00 → 2007-12-11 09:00 A (+25d) | 2007-11-20 09:00 → 2007-12-13 09:00 (+23d) |  | 0% → 75% | 0d → 32.75d | 9 → 12 | resources YU 1 → Burak Uçakan; baseline start 2007-11-16 14:00 → none; baseline finish 2007-11-20 09:00 → none |
| 15 | Başvurularım | 2007-11-27 09:00 → 2007-12-17 14:00 A (+20d) | 2007-11-28 09:00 → 2007-12-19 14:00 A (+21d) | 1d → 2d | 0% → 100% | 0d → none | 17 → 14 | resources YU 1 → Burak Uçakan; baseline start 2007-11-27 09:00 → none; baseline finish 2007-11-28 09:00 → none |
| 17 | **İlanlar** | 2007-11-22 14:00 → 2007-12-21 14:00 A (+29d) | 2007-11-27 09:00 → 2007-12-27 14:00 (+30d) | 2.5d → 4.5d | 0% → 94% | 0d → 21.25d | İş arama → none | baseline start 2007-11-22 14:00 → none; baseline finish 2007-11-27 09:00 → none |
| 19 | İlan listesi | 2007-11-22 14:00 → 2007-12-26 09:00 A (+34d) | 2007-11-26 09:00 → 2007-12-27 09:00 (+31d) | 2d → 1d | 0% → 75% | 0d → 21.75d | none → 18 | resources YU 1 → Burak Uçakan; baseline start 2007-11-22 14:00 → none; baseline finish 2007-11-26 09:00 → none |
| 23 | **İşveren** | 2007-11-30 09:00 → 2007-12-04 14:00 (+4d) | 2007-12-25 09:00 → 2007-12-24 10:36 (-1d) | 17d → 15.2d |  | 0d → 4.55d | 6 → none | baseline start 2007-11-30 09:00 → none; baseline finish 2007-12-25 09:00 → none |
| 24 | Anasayfa | 2007-11-30 09:00 → 2007-12-04 14:00 (+4d) | 2007-12-01 09:00 → 2007-12-07 14:00 (+6d) | 1d → 3d |  | 0d → 4.55d | none → 11 | resources YU 1 → Oray Kan; baseline start 2007-11-30 09:00 → none; baseline finish 2007-12-01 09:00 → none |
| 25 | Yeni üyelik | 2007-12-01 09:00 → 2007-12-07 14:00 (+6d) | 2007-12-03 14:00 → 2007-12-08 09:00 (+5d) | 1d → 0.5d |  | 0d → 4.55d |  | resources YU 1 → Oray Kan; baseline start 2007-12-01 09:00 → none; baseline finish 2007-12-03 14:00 → none |
| 26 | Firma anasayfası | 2007-12-04 09:00 → 2007-12-08 09:00 (+4d) | 2007-12-06 09:00 → 2007-12-11 14:00 (+5d) |  |  | 0d → 4.55d | Üye girişi → 25 | resources YU 1 → Oray Kan; baseline start 2007-12-04 09:00 → none; baseline finish 2007-12-06 09:00 → none |
| 30 | Yeni ilan | 2007-12-13 14:00 → 2007-12-14 14:00 (+1d) |  | 2.5d → 1.5d |  | 0d → 4.55d | 32 → 29 | resources YU 1 → Oray Kan; baseline start 2007-12-13 14:00 → none; baseline finish 2007-12-17 14:00 → none |
| 32 | **İlan** | 2007-12-06 09:00 → 2007-12-17 14:00 (+11d) | 2007-12-13 14:00 → 2007-12-18 14:00 (+5d) | 5.5d → 1d |  | 0d → 4.55d | 26 → none | was named İlanlarım; baseline start 2007-12-06 09:00 → none; baseline finish 2007-12-13 14:00 → none |
| 33 | İlanlarım | 2007-12-06 09:00 → 2007-12-17 14:00 (+11d) | 2007-12-08 09:00 → 2007-12-18 09:00 (+10d) | 2d → 0.5d |  | 0d → 4.55d | none → 30 | was named İlan listesi; resources YU 1 → Oray Kan; baseline start 2007-12-06 09:00 → none; baseline finish 2007-12-08 09:00 → none |
| 37 | Başvuru cevaplama | 2007-12-10 14:00 → 2007-12-19 09:00 (+9d) | 2007-12-11 09:00 → 2007-12-19 14:00 (+8d) |  |  | 0d → 4.55d | Başvurular → 35 | resources YU 1 → Oray Kan; baseline start 2007-12-10 14:00 → none; baseline finish 2007-12-11 09:00 → none |
| 38 | Mülakata çağır | 2007-12-11 09:00 → 2007-12-19 14:00 (+8d) | 2007-12-13 09:00 → 2007-12-20 09:00 (+7d) | 2d → 0.5d |  | 0d → 4.55d |  | was named Mülakat atama; resources YU 1 → Oray Kan; baseline start 2007-12-11 09:00 → none; baseline finish 2007-12-13 09:00 → none |
| 41 | Başvuru istatistikleri | 2007-12-13 09:00 → 2007-12-20 15:36 (+7d) | 2007-12-13 14:00 → 2007-12-21 10:36 (+8d) |  |  | 0d → 4.55d | 38 → 40 | resources YU 1 → Oray Kan; baseline start 2007-12-13 09:00 → none; baseline finish 2007-12-13 14:00 → none |
| 43 | Projeler | 2007-12-20 14:00 → 2007-12-22 10:36 (+2d) | 2007-12-21 14:00 → 2007-12-24 10:36 (+3d) | 1d → 0.5d |  | 0d → 4.55d | CV tarama → 42 | was named Özel proje; resources YU 1 → Oray Kan; baseline start 2007-12-20 14:00 → none; baseline finish 2007-12-21 14:00 → none |
| 45 | **Yönetim paneli** | 2007-11-03 09:00 → 2007-12-28 16:00 (+55d) | 2007-12-17 14:00 → 2008-01-16 11:00 (+30d) | 30.62d → 14d |  | 5.12d → 0d | 2 → 44 | baseline start 2007-11-03 09:00 → none; baseline finish 2007-12-17 14:00 → none |
| 46 | Kullanıcı girişi | 2007-11-03 09:00 → 2007-12-28 16:00 (+55d) | 2007-11-05 09:00 → 2007-12-29 11:00 (+54d) |  |  | 5.12d → 0.7d |  | resources YU 2 → Burak Uçakan; baseline start 2007-11-03 09:00 → none; baseline finish 2007-11-05 09:00 → none |
| 47 | Kullanıcı tanımlama/yetkilendirme | 2007-11-05 09:00 → 2007-12-29 11:00 (+54d) | 2007-11-06 14:00 → 2007-12-31 16:00 (+55d) | 1.5d → 1d |  | 5.5d → 0.7d |  | resources YU 2 → Burak Uçakan; baseline start 2007-11-05 09:00 → none; baseline finish 2007-11-06 14:00 → none |
| 48 | **Aday işlemleri** | 2007-11-06 14:00 → 2007-12-31 16:00 (+55d) | 2007-11-15 14:00 → 2008-01-04 16:00 (+50d) | 7d → 4d |  | 5.5d → 0.7d |  | baseline start 2007-11-06 14:00 → none; baseline finish 2007-11-15 14:00 → none |
| 49 | Aday listesi | 2007-11-06 14:00 → 2007-12-31 16:00 (+55d) | 2007-11-07 14:00 → 2008-01-01 11:00 (+55d) | 1d → 0.5d |  | 5.5d → 0.7d |  | resources YU 2 → Burak Uçakan; baseline start 2007-11-06 14:00 → none; baseline finish 2007-11-07 14:00 → none |
| 50 | Kişi kartı | 2007-11-07 14:00 → 2008-01-01 11:00 (+55d) | 2007-11-09 14:00 → 2008-01-01 16:00 (+53d) | 2d → 0.5d |  | 5.38d → 0.7d |  | resources YU 2 → Burak Uçakan; baseline start 2007-11-07 14:00 → none; baseline finish 2007-11-09 14:00 → none |
| 51 | Özgeçmiş düzenleme/onaylama | 2007-11-09 14:00 → 2008-01-01 16:00 (+53d) | 2007-11-12 09:00 → 2008-01-02 11:00 (+51d) | 1d → 0.5d |  | 5.38d → 0.7d |  | resources YU 2 → Burak Uçakan; baseline start 2007-11-09 14:00 → none; baseline finish 2007-11-12 09:00 → none |
| 52 | Klasöre gönder | 2007-11-12 09:00 → 2008-01-02 11:00 (+51d) | 2007-11-12 14:00 → 2008-01-02 14:00 (+51d) | 0.5d → 0.25d |  | 5.5d → 0.7d |  | resources YU 2 → Burak Uçakan; baseline start 2007-11-12 09:00 → none; baseline finish 2007-11-12 14:00 → none |
| 53 | Özel projeye gönder | 2007-11-12 14:00 → 2008-01-02 14:00 (+51d) | 2007-11-13 09:00 → 2008-01-02 16:00 (+50d) | 0.5d → 0.25d |  | 5.5d → 0.7d |  | resources YU 2 → Burak Uçakan; baseline start 2007-11-12 14:00 → none; baseline finish 2007-11-13 09:00 → none |
| 54 | Eleman/yönetici havuzuna at | 2007-11-13 09:00 → 2008-01-02 16:00 (+50d) | 2007-11-13 14:00 → 2008-01-03 09:00 (+51d) | 0.5d → 0.25d |  | 5.5d → 0.7d |  | resources YU 2 → Burak Uçakan; baseline start 2007-11-13 09:00 → none; baseline finish 2007-11-13 14:00 → none |
| 55 | Mesaj gönder | 2007-11-13 14:00 → 2008-01-03 09:00 (+51d) | 2007-11-14 09:00 → 2008-01-03 14:00 (+50d) |  |  | 5.5d → 0.7d |  | resources YU 2 → Burak Uçakan; baseline start 2007-11-13 14:00 → none; baseline finish 2007-11-14 09:00 → none |
| 56 | Mülakata çağır | 2007-11-14 09:00 → 2008-01-03 14:00 (+50d) | 2007-11-15 09:00 → 2008-01-04 14:00 (+50d) |  |  | 5.5d → 0.7d |  | resources YU 2 → Burak Uçakan; baseline start 2007-11-14 09:00 → none; baseline finish 2007-11-15 09:00 → none |
| 57 | Aktif/pasif yap | 2007-11-15 09:00 → 2008-01-04 14:00 (+50d) | 2007-11-15 14:00 → 2008-01-04 16:00 (+50d) | 0.5d → 0.25d |  | 5.5d → 0.7d |  | resources YU 2 → Burak Uçakan; baseline start 2007-11-15 09:00 → none; baseline finish 2007-11-15 14:00 → none |
| 58 | **Firma yönetimi** | 2007-11-15 14:00 → 2008-01-04 16:00 (+50d) | 2007-11-21 09:00 → 2008-01-08 16:00 (+48d) | 3.5d → 2.5d |  | 5.5d → 0.7d |  | baseline start 2007-11-15 14:00 → none; baseline finish 2007-11-21 09:00 → none |
| 59 | Firma listesi | 2007-11-15 14:00 → 2008-01-04 16:00 (+50d) | 2007-11-16 14:00 → 2008-01-05 11:00 (+50d) | 1d → 0.5d |  | 5.38d → 0.7d |  | resources YU 2 → Burak Uçakan; baseline start 2007-11-15 14:00 → none; baseline finish 2007-11-16 14:00 → none |
| 60 | Firma işlemleri | 2007-11-16 14:00 → 2008-01-05 11:00 (+50d) | 2007-11-20 09:00 → 2008-01-07 16:00 (+48d) | 2d → 1d |  | 5.38d → 0.7d |  | resources YU 2 → Burak Uçakan; baseline start 2007-11-16 14:00 → none; baseline finish 2007-11-20 09:00 → none |
| 61 | Firma girişi | 2007-11-20 09:00 → 2008-01-07 16:00 (+48d) | 2007-11-21 09:00 → 2008-01-08 16:00 (+48d) |  |  | 5.5d → 0.7d |  | resources YU 2 → Burak Uçakan; baseline start 2007-11-20 09:00 → none; baseline finish 2007-11-21 09:00 → none |
| 62 | **İçerik yönetimi** | 2007-11-21 09:00 → 2008-01-08 16:00 (+48d) | 2007-11-22 14:00 → 2008-01-09 16:00 (+48d) | 1.5d → 1d |  | 5.5d → 0.7d |  | baseline start 2007-11-21 09:00 → none; baseline finish 2007-11-22 14:00 → none |
| 63 | Makale yönetimi | 2007-11-21 09:00 → 2008-01-08 16:00 (+48d) | 2007-11-21 14:00 → 2008-01-09 11:00 (+49d) |  |  | 5.5d → 0.7d |  | resources YU 2 → Burak Uçakan; baseline start 2007-11-21 09:00 → none; baseline finish 2007-11-21 14:00 → none |
| 64 | Firma görüşleri yönetimi | 2007-11-21 14:00 → 2008-01-09 11:00 (+49d) | 2007-11-22 09:00 → 2008-01-09 14:00 (+48d) | 0.5d → 0.25d |  | 5.5d → 0.7d |  | resources YU 2 → Burak Uçakan; baseline start 2007-11-21 14:00 → none; baseline finish 2007-11-22 09:00 → none |
| 65 | Başarı hikayeleri yönetimi | 2007-11-22 09:00 → 2008-01-09 14:00 (+48d) | 2007-11-22 14:00 → 2008-01-09 16:00 (+48d) | 0.5d → 0.25d |  | 5.5d → 0.7d |  | resources YU 2 → Burak Uçakan; baseline start 2007-11-22 09:00 → none; baseline finish 2007-11-22 14:00 → none |
| 66 | **İlan kontrolü** | 2007-11-22 14:00 → 2008-01-09 16:00 (+48d) | 2007-11-27 09:00 → 2008-01-10 16:00 (+44d) | 2.5d → 1d |  | 5.5d → 0.7d |  | baseline start 2007-11-22 14:00 → none; baseline finish 2007-11-27 09:00 → none |
| 67 | İlan listesi | 2007-11-22 14:00 → 2008-01-09 16:00 (+48d) | 2007-11-26 09:00 → 2008-01-10 11:00 (+45d) | 2d → 0.5d |  | 5.5d → 0.7d |  | resources YU 2 → Burak Uçakan; baseline start 2007-11-22 14:00 → none; baseline finish 2007-11-26 09:00 → none |
| 68 | Başvuru listesi | 2007-11-26 09:00 → 2008-01-10 11:00 (+45d) | 2007-11-27 09:00 → 2008-01-10 16:00 (+44d) | 1d → 0.5d |  | 5.5d → 0.7d |  | resources YU 2 → Burak Uçakan; baseline start 2007-11-26 09:00 → none; baseline finish 2007-11-27 09:00 → none |
| 69 | **Tanımlama ekranları** | 2007-11-27 09:00 → 2008-01-10 16:00 (+44d) | 2007-12-05 14:00 → 2008-01-15 14:24 (+41d) | 6.5d → 3.3d |  | 5.5d → 0.7d |  | baseline start 2007-11-27 09:00 → none; baseline finish 2007-12-05 14:00 → none |
| 70 | Sektörler | 2007-11-27 09:00 → 2008-01-10 16:00 (+44d) | 2007-11-28 09:00 → 2008-01-11 08:12 (+44d) | 1d → 0.15d |  | 5.5d → 0.7d |  | resources YU 2 → Burak Uçakan; baseline start 2007-11-27 09:00 → none; baseline finish 2007-11-28 09:00 → none |
| 71 | Pozisyonlar | 2007-11-28 09:00 → 2008-01-11 08:12 (+44d) | 2007-11-29 09:00 → 2008-01-11 09:24 (+43d) | 1d → 0.15d |  | 5.5d → 0.7d |  | resources YU 2 → Burak Uçakan; baseline start 2007-11-28 09:00 → none; baseline finish 2007-11-29 09:00 → none |
| 72 | İlan kaldırma sebepleri | 2007-11-29 09:00 → 2008-01-11 09:24 (+43d) | 2007-11-29 11:00 → 2008-01-11 10:36 (+43d) | 0.25d → 0.15d |  | 5.5d → 0.7d |  | resources YU 2 → Burak Uçakan; baseline start 2007-11-29 09:00 → none; baseline finish 2007-11-29 11:00 → none |
| 73 | Diller | 2007-11-29 11:00 → 2008-01-11 10:36 (+43d) | 2007-11-29 14:00 → 2008-01-11 11:48 (+43d) | 0.25d → 0.15d |  | 5.5d → 0.7d |  | resources YU 2 → Burak Uçakan; baseline start 2007-11-29 11:00 → none; baseline finish 2007-11-29 14:00 → none |
| 74 | Ülkeler | 2007-11-29 14:00 → 2008-01-11 11:48 (+43d) | 2007-11-29 16:00 → 2008-01-11 14:00 (+43d) | 0.25d → 0.15d |  | 5.5d → 0.7d |  | resources YU 2 → Burak Uçakan; baseline start 2007-11-29 14:00 → none; baseline finish 2007-11-29 16:00 → none |
| 75 | Şehirler | 2007-11-29 16:00 → 2008-01-11 14:00 (+43d) | 2007-11-30 09:00 → 2008-01-11 15:12 (+42d) | 0.25d → 0.15d |  | 5.5d → 0.7d |  | resources YU 2 → Burak Uçakan; baseline start 2007-11-29 16:00 → none; baseline finish 2007-11-30 09:00 → none |
| 76 | İlçeler | 2007-11-30 09:00 → 2008-01-11 15:12 (+42d) | 2007-11-30 11:00 → 2008-01-11 16:24 (+42d) | 0.25d → 0.15d |  | 5.5d → 0.7d |  | resources YU 2 → Burak Uçakan; baseline start 2007-11-30 09:00 → none; baseline finish 2007-11-30 11:00 → none |
| 77 | İş alanları | 2007-11-30 11:00 → 2008-01-11 16:24 (+42d) | 2007-11-30 14:00 → 2008-01-12 08:36 (+43d) | 0.25d → 0.15d |  | 5.38d → 0.7d |  | resources YU 2 → Burak Uçakan; baseline start 2007-11-30 11:00 → none; baseline finish 2007-11-30 14:00 → none |
| 78 | Aday ünvanları | 2007-11-30 14:00 → 2008-01-12 08:36 (+43d) | 2007-11-30 16:00 → 2008-01-12 09:48 (+43d) | 0.25d → 0.15d |  | 5.12d → 0.7d |  | resources YU 2 → Burak Uçakan; baseline start 2007-11-30 14:00 → none; baseline finish 2007-11-30 16:00 → none |
| 79 | Eğitim durumu | 2007-11-30 16:00 → 2008-01-12 09:48 (+43d) | 2007-12-01 09:00 → 2008-01-12 11:00 (+42d) | 0.25d → 0.15d |  | 5.12d → 0.7d |  | resources YU 2 → Burak Uçakan; baseline start 2007-11-30 16:00 → none; baseline finish 2007-12-01 09:00 → none |
| 80 | Nitelik tipleri | 2007-12-01 09:00 → 2008-01-12 11:00 (+42d) | 2007-12-01 11:00 → 2008-01-14 08:12 (+44d) | 0.25d → 0.15d |  | 5.12d → 0.7d |  | resources YU 2 → Burak Uçakan; baseline start 2007-12-01 09:00 → none; baseline finish 2007-12-01 11:00 → none |
| 81 | Üniversiteler | 2007-12-01 11:00 → 2008-01-14 08:12 (+44d) | 2007-12-03 09:00 → 2008-01-14 09:24 (+42d) | 0.25d → 0.15d |  | 5.38d → 0.7d |  | resources YU 2 → Burak Uçakan; baseline start 2007-12-01 11:00 → none; baseline finish 2007-12-03 09:00 → none |
| 82 | Üniversite fakülteleri | 2007-12-03 09:00 → 2008-01-14 09:24 (+42d) | 2007-12-03 11:00 → 2008-01-14 10:36 (+42d) | 0.25d → 0.15d |  | 5.5d → 0.7d |  | resources YU 2 → Burak Uçakan; baseline start 2007-12-03 09:00 → none; baseline finish 2007-12-03 11:00 → none |
| 83 | Üniversite bölümleri | 2007-12-03 11:00 → 2008-01-14 10:36 (+42d) | 2007-12-03 14:00 → 2008-01-14 11:48 (+42d) | 0.25d → 0.15d |  | 5.5d → 0.7d |  | resources YU 2 → Burak Uçakan; baseline start 2007-12-03 11:00 → none; baseline finish 2007-12-03 14:00 → none |
| 84 | Firma departmanları | 2007-12-03 14:00 → 2008-01-14 11:48 (+42d) | 2007-12-03 16:00 → 2008-01-14 14:00 (+42d) | 0.25d → 0.15d |  | 5.5d → 0.7d |  | resources YU 2 → Burak Uçakan; baseline start 2007-12-03 14:00 → none; baseline finish 2007-12-03 16:00 → none |
| 85 | Kimlik belgesi tipleri | 2007-12-03 16:00 → 2008-01-14 14:00 (+42d) | 2007-12-04 09:00 → 2008-01-14 15:12 (+41d) | 0.25d → 0.15d |  | 5.5d → 0.7d |  | resources YU 2 → Burak Uçakan; baseline start 2007-12-03 16:00 → none; baseline finish 2007-12-04 09:00 → none |
| 86 | Sürücü ehliyeti tipleri | 2007-12-04 09:00 → 2008-01-14 15:12 (+41d) | 2007-12-04 11:00 → 2008-01-14 16:24 (+41d) | 0.25d → 0.15d |  | 5.5d → 0.7d |  | resources YU 2 → Burak Uçakan; baseline start 2007-12-04 09:00 → none; baseline finish 2007-12-04 11:00 → none |
| 87 | Engellilik tipleri | 2007-12-04 11:00 → 2008-01-14 16:24 (+41d) | 2007-12-04 14:00 → 2008-01-15 08:36 (+42d) | 0.25d → 0.15d |  | 5.5d → 0.7d |  | resources YU 2 → Burak Uçakan; baseline start 2007-12-04 11:00 → none; baseline finish 2007-12-04 14:00 → none |

| ID | Task | Start | Finish | Duration | Total float | Predecessors | Other |
| --- | --- | --- | --- | --- | --- | --- | --- |
| 88 | Hobiler | 2007-12-04 14:00 → 2008-01-15 08:36 (+42d) | 2007-12-04 16:00 → 2008-01-15 09:48 (+42d) | 0.25d → 0.15d | 5.5d → 0.7d |  | resources YU 2 → Burak Uçakan; baseline start 2007-12-04 14:00 → none; baseline finish 2007-12-04 16:00 → none |
| 89 | Bilgisayar bilgi tipleri | 2007-12-04 16:00 → 2008-01-15 09:48 (+42d) | 2007-12-05 09:00 → 2008-01-15 11:00 (+41d) | 0.25d → 0.15d | 5.5d → 0.7d |  | resources YU 2 → Burak Uçakan; baseline start 2007-12-04 16:00 → none; baseline finish 2007-12-05 09:00 → none |
| 90 | Sertifikalar | 2007-12-05 09:00 → 2008-01-15 11:00 (+41d) | 2007-12-05 11:00 → 2008-01-15 13:12 (+41d) | 0.25d → 0.15d | 5.5d → 0.7d |  | resources YU 2 → Burak Uçakan; baseline start 2007-12-05 09:00 → none; baseline finish 2007-12-05 11:00 → none |
| 91 | Özel eğitim tipleri | 2007-12-05 11:00 → 2008-01-15 13:12 (+41d) | 2007-12-05 14:00 → 2008-01-15 14:24 (+41d) | 0.25d → 0.15d | 5.5d → 0.7d |  | resources YU 2 → Burak Uçakan; baseline start 2007-12-05 11:00 → none; baseline finish 2007-12-05 14:00 → none |
| 92 | **Ödeme işlemleri** | 2007-12-05 14:00 → 2007-12-28 16:00 (+23d) | 2007-12-12 09:00 → 2008-01-03 11:00 (+22d) | 4.5d → 4d | 5.5d → 0d | 69 → none | baseline start 2007-12-05 14:00 → none; baseline finish 2007-12-12 09:00 → none |
| 93 | Ödeme takibi (listesi) | 2007-12-05 14:00 → 2007-12-28 16:00 (+23d) | 2007-12-07 14:00 → 2007-12-31 11:00 (+24d) | 2d → 1d | 5.38d → 0d |  | resources YU 2 → Oray Kan; baseline start 2007-12-05 14:00 → none; baseline finish 2007-12-07 14:00 → none |
| 94 | Ödeme girişi | 2007-12-07 14:00 → 2007-12-31 11:00 (+24d) | 2007-12-10 09:00 → 2008-01-01 11:00 (+22d) |  | 5.38d → 0d |  | resources YU 2 → Oray Kan; baseline start 2007-12-07 14:00 → none; baseline finish 2007-12-10 09:00 → none |
| 95 | Faturalama | 2007-12-10 09:00 → 2008-01-01 11:00 (+22d) | 2007-12-12 09:00 → 2008-01-03 11:00 (+22d) |  | 5.5d → 0d |  | resources YU 2 → Oray Kan; baseline start 2007-12-10 09:00 → none; baseline finish 2007-12-12 09:00 → none |
| 96 | Banner yönetimi | 2007-12-12 09:00 → 2008-01-03 11:00 (+22d) | 2007-12-17 14:00 → 2008-01-05 11:00 (+19d) | 4d → 2d | 5.5d → 0d | 92 → 95 | resources YU 2 → Oray Kan; baseline start 2007-12-12 09:00 → none; baseline finish 2007-12-17 14:00 → none |
| 97 | Raporlar | 2007-12-25 14:00 → 2008-01-05 11:00 (+11d) | 2008-01-04 09:00 → 2008-01-16 11:00 (+12d) |  |  | 3 → 96 | resources YU 1 → Oray Kan; baseline start 2007-12-25 14:00 → none; baseline finish 2008-01-04 09:00 → none |
| 98 | Test | 2008-01-04 09:00 → 2008-01-16 11:00 (+12d) | 2008-01-11 09:00 → 2008-01-22 16:00 (+11d) |  |  | 97 → 97, 91 | resources none → Oray Kan; Burak Uçakan; baseline start 2008-01-04 09:00 → none; baseline finish 2008-01-11 09:00 → none |
